Schedule from MS Project, 2011-08-01 to 2011-11-14, 6 hours a day, A marks actual dates.

## Calendars

- Laboratorio II: Mon 16:00-22:00; Tue-Sun off. Exceptions (off unless hours are given): 2011-08-15, 2011-08-22, 2011-10-10.

## Resources

| Resource | Group |
| --- | --- |
| Damian | developers |
| Pablo | developers |
| Martin | developers |
| Daniel |  |
| Tomas |  |
| Mariano |  |
| Agustin |  |

## Schedule

| ID | WBS | Task | Type | Duration | Start | Finish | Predecessors | Complete | Remaining | Actual finish | Total slack | Free slack | Constraint | Deadline | Resources | Work | Actual work |
| --- | --- | --- | --- | --- | --- | --- | --- | --- | --- | --- | --- | --- | --- | --- | --- | --- | --- |
| 1 | 1 | **Qnet** |  | 13d? | 2011-08-01 09:00 A | 2011-11-14 22:00 |  | 66% | 4.41d? |  | 0d |  |  | 2011-11-14 22:00 |  | 420.13h | 279.21h |
| 2 | 1.1 | Project start | milestone | 0d | 2011-08-01 09:00 | 2011-08-01 09:00 |  |  |  |  | 6.62d | 0.33d |  |  |  |  |  |
| 3 | 1.2 | **Setting enviroment** |  | 3.83d | 2011-08-01 16:00 A | 2011-09-05 21:00 A |  | 100% |  |  |  |  |  |  |  | 69h | 69h |
| 4 | 1.2.1 | Asignacion de Recursos |  | 0.33d | 2011-08-01 16:00 A | 2011-08-01 18:00 A | 2 | 100% |  |  |  |  |  |  | Damian; Pablo; Martin | 6h | 6h |
| 5 | 1.2.2 | Capacitación |  | 1.5d | 2011-08-01 18:00 A | 2011-09-05 21:00 A | 4 | 100% |  |  |  |  |  |  | Damian; Pablo; Martin | 27h | 27h |
| 6 | 1.2.3 | Set enviroment |  | 2d | 2011-08-08 16:00 A | 2011-08-29 22:00 A | 4FS+4h | 100% |  |  |  |  | start no earlier than 2011-08-07 16:00 |  | Damian; Pablo; Martin | 36h | 36h |
| 7 | 1.3 | Sprint 1 y 2 Planning Meeting |  | 0.17d | 2011-09-05 21:00 A | 2011-09-05 22:00 | 3 | 50% | 0.08d |  | 9d |  |  |  | Damian; Pablo; Martin | 3h | 1.5h |
| 8 | 1.4 | **Sprint 1 - Privacy & Security** |  | 1d | 2011-09-12 16:00 A | 2011-09-12 22:00 A | 7 | 100% |  |  |  |  |  |  |  | 15h | 15h |
| 9 | 1.4.1 | **Privacy tasks** |  | 0.33d | 2011-09-12 16:00 A | 2011-09-12 18:00 A |  | 100% |  |  |  |  |  |  |  | 4h | 4h |
| 10 | 1.4.1.1 | Verify terms and conditions approval |  | 0.33d | 2011-09-12 16:00 A | 2011-09-12 18:00 A |  | 100% |  |  |  |  |  |  | Martin; Damian | 4h | 4h |
| 11 | 1.4.2 | **Security Improvements** |  | 1d | 2011-09-12 16:00 A | 2011-09-12 22:00 A |  | 100% |  |  |  |  |  |  |  | 11h | 11h |
| 12 | 1.4.2.1 | Sql injection check |  | 0.42d | 2011-09-12 18:30 A | 2011-09-12 21:00 A | 9 | 100% |  |  |  |  |  |  | Martin; Damian | 5h | 5h |
| 13 | 1.4.2.2 | Captcha check |  | 1d | 2011-09-12 16:00 A | 2011-09-12 22:00 A | 7 | 100% |  |  |  |  |  |  | Pablo | 6h | 6h |
| 14 | 1.5 | End Sprint 1 | milestone | 0d | 2011-09-12 22:00 | 2011-09-12 22:00 | 11, 9 |  |  |  | 8d |  |  |  |  |  |  |
| 15 | 1.6 | **Sprint 2 - Social improvements** |  | 2d | 2011-09-19 16:00 A | 2011-09-26 22:00 A | 14 | 100% |  |  |  |  |  |  |  | 24h | 24h |
| 16 | 1.6.1 | User popularity ranking |  | 2d | 2011-09-19 16:00 A | 2011-09-26 22:00 A |  | 100% |  |  |  |  |  |  | Damian | 12h | 12h |
| 17 | 1.6.2 | Instant messages |  | 1d | 2011-09-26 16:00 A | 2011-09-26 22:00 A |  | 100% |  |  |  |  | start no earlier than 2011-09-26 16:00 |  | Pablo; Martin | 12h | 12h |
| 18 | 1.7 | **Integracion Sprint 1 y 2** |  | 12h | 2011-10-03 16:00 A | 2011-10-17 22:00 | 15 | 100% |  | 2011-10-17 17:00 |  |  |  |  |  | 21h | 21h |
| 19 | 1.7.1 | Tests Sprint 1 y 2 |  | 0.42d | 2011-10-03 16:00 A | 2011-10-03 18:30 A |  | 100% |  |  |  |  |  |  | Martin; Damian; Pablo | 7.5h | 7.5h |
| 20 | 1.7.2 | Correcciones Sprint 1 y 2 |  | 0.75d | 2011-10-03 18:30 A | 2011-10-17 17:00 A | 19 | 100% |  |  |  |  |  |  | Martin; Damian; Pablo | 13.5h | 13.5h |
| 21 | 1.8 | End Sprint 2 | milestone | 0d | 2011-10-17 22:00 A | 2011-10-17 22:00 A | 18 | 100% |  |  |  |  |  |  |  |  |  |
| 22 | 1.9 | Sprint 3 Planning Meeting |  | 0.17d | 2011-10-03 21:00 A | 2011-10-03 22:00 A |  | 100% |  |  |  |  |  |  | Martin; Damian; Pablo | 3h | 3h |
| 23 | 1.10 | **Sprint 3 - Miscellaneous** |  | 0.83d | 2011-10-17 16:00 | 2011-10-17 21:00 | 22 |  |  |  | 0.17d |  |  |  |  | 15h |  |
| 24 | 1.10.1 | Password recovery |  | 0.83d | 2011-10-17 16:00 | 2011-10-17 21:00 |  |  |  |  | 0.17d |  |  |  | Damian | 5h |  |
| 25 | 1.10.2 | Recommend to a friend |  | 0.83d | 2011-10-17 16:00 | 2011-10-17 21:00 |  |  |  |  | 0.17d |  |  |  | Pablo; Martin | 10h |  |

| ID | WBS | Task | Type | Duration | Start | Finish | Predecessors | Complete | Remaining | Actual start | Total slack | Free slack | Constraint | Resources | Work | Actual work |
| --- | --- | --- | --- | --- | --- | --- | --- | --- | --- | --- | --- | --- | --- | --- | --- | --- |
| 26 | 1.11 | **Integracion Sprint 3** |  | 1.16d | 2011-10-24 16:00 | 2011-10-31 16:58 | 23 |  |  |  |  |  |  |  | 20.94h |  |
| 27 | 1.11.1 | Tests Sprint 3 |  | 0.58d | 2011-10-24 16:00 | 2011-10-24 19:28 |  |  |  |  | 0d |  |  | Damian; Pablo; Martin | 10.44h |  |
| 28 | 1.11.2 | Correcciones Sprint 3 |  | 0.58d | 2011-10-24 19:28 | 2011-10-31 16:58 | 27 |  |  |  | 0d |  |  | Damian; Pablo; Martin | 10.5h |  |
| 29 | 1.12 | Release Meeting |  | 0.33d | 2011-10-31 16:58 | 2011-10-31 18:58 | 26 |  |  |  | 0.5d | 0d |  | Damian; Pablo; Martin | 6h |  |
| 30 | 1.13 | Reserva Developers |  | 2d | 2011-10-31 18:58 | 2011-11-14 18:58 | 29 |  |  |  | 0.5d |  |  | Damian; Pablo; Martin | 36h |  |
| 31 | 1.14 | Entrega Final (fin) | milestone | 0d | 2011-11-14 16:00 | 2011-11-14 16:00 |  |  |  |  | 1d |  | start no earlier than 2011-11-14 16:00 |  |  |  |
| 32 | 1.15 | **Management** |  | 12.67d | 2011-08-01 18:00 A | 2011-11-14 22:00 |  | 66% | 4.37d |  | 0d |  |  |  | 183.19h | 121.71h |
| 33 | 1.15.1 | Project Management |  | 8d | 2011-08-01 18:00 A | 2011-11-14 22:00 | 2 | 58% | 3.33d |  | 0d |  | finish no earlier than 2011-11-14 22:00 | Daniel | 48h | 28h |
| 34 | 1.15.2 | Reserva Managers |  | 8d | 2011-08-01 18:00 A | 2011-11-14 22:00 | 2 | 58% | 3.33d |  | 0d |  | finish no earlier than 2011-11-14 22:00 | Tomas | 48h | 28h |
| 35 | 1.15.3 | Reserva Mariano |  | 12h | 2011-10-31 18:00 | 2011-11-14 22:00 |  |  |  |  | 0d |  | start no earlier than 2011-10-31 16:00 | Mariano | 12h |  |
| 36 | 1.15.4 | **Testing** |  | 9.17d | 2011-09-05 21:00 | 2011-11-14 22:00 | 3 | 83% | 1.53d | 2011-09-05 18:00 |  |  |  |  | 24h | 20h |
| 37 | 1.15.4.1 | Definición de casos de prueba 1 |  | 1.33d? | 2011-09-05 18:00 A | 2011-09-12 22:00 A |  | 100% |  |  |  |  | start no earlier than 2011-09-05 16:00 | Mariano | 8h | 8h |
| 38 | 1.15.4.2 | Testing 1 |  | 0.67d | 2011-09-26 18:00 A | 2011-09-26 22:00 A | 37 | 100% |  |  |  |  | start no earlier than 2011-09-26 16:00 | Mariano | 4h | 4h |
| 39 | 1.15.4.3 | Definición de casos de prueba 2 |  | 0.33d? | 2011-10-03 18:00 A | 2011-10-03 20:00 A | 38 | 100% |  |  |  |  | start no earlier than 2011-09-26 16:00 | Mariano | 2h | 2h |
| 40 | 1.15.4.4 | Testing 2 |  | 0.33d | 2011-10-03 18:00 A | 2011-10-03 20:00 A |  | 100% |  |  |  |  | start no earlier than 2011-10-03 16:00 | Mariano | 2h | 2h |
| 41 | 1.15.4.5 | Definición de casos de prueba 3 |  | 0.67d? | 2011-10-17 18:00 A | 2011-10-17 22:00 A | 40 | 100% |  |  |  |  | start no earlier than 2011-10-17 16:00 | Mariano | 4h | 4h |
| 42 | 1.15.4.6 | Testing 3 |  | 0.67d | 2011-10-24 18:00 | 2011-10-24 22:00 | 41 |  |  |  | 3d |  | start no earlier than 2011-10-24 16:00 | Mariano | 4h |  |
| 43 | 1.15.5 | IT Support |  | 8.46d | 2011-08-01 18:00 A | 2011-11-14 20:45 A | 2 | 100% |  |  |  |  |  | Agustin [65%] | 32.99h | 32.99h |
| 44 | 1.15.6 | Project Status Tracking |  | 8.67d | 2011-08-01 18:00 A | 2011-11-14 22:00 | 2 | 85% | 1.33d |  | 0d |  |  | Agustin [25%] | 13h | 11h |
| 45 | 1.15.7 | Team Meeting Planning |  | 8.67d | 2011-08-01 18:00 A | 2011-11-14 21:59 | 2 | 33% | 5.81d |  | 0d |  |  | Agustin [10%] | 5.2h | 1.72h |
| 46 | 1.16 | **Faltas y tiempo improductivo** |  | 1d? | 2011-09-19 16:00 A | 2011-09-19 22:00 A |  | 100% |  |  |  |  |  |  | 24h | 24h |
| 47 | 1.16.1 | Google Developers Day |  | 6h? | 2011-09-19 16:00 A | 2011-09-19 22:00 A | 14 | 100% |  |  |  |  |  | Daniel; Mariano; Martin; Pablo; Tomas | 24h | 24h |
