Schedule from MS Project, 2011-08-01 to 2011-12-12, 6 hours a day, A marks actual dates.

## Calendars

- Laboratorio II: Mon 16:00-22:00; Tue-Sun off. Exceptions (off unless hours are given): 2011-08-15, 2011-08-22, 2011-10-10.

## Resources

| Resource | Group |
| --- | --- |
| Damin | developers |
| Pablo | developers |
| Martin | developers |
| Scrum Master |  |
| Manager 1 |  |
| Manager 2 |  |
| Manager 3 |  |

## Schedule

| ID | WBS | Task | Type | Duration | Start | Finish | Predecessors | Complete | Remaining | Total slack | Free slack | Constraint | Resources | Work | Actual work |
| --- | --- | --- | --- | --- | --- | --- | --- | --- | --- | --- | --- | --- | --- | --- | --- |
| 1 | 1 | **Qnet** |  | 16.17d? | 2011-08-01 A | 2011-12-12 |  | 41% | 9.49d? | 0.17d |  |  |  | 428.51h | 173.88h |
| 2 | 1.1 | Project start | milestone | 0d | 2011-08-01 | 2011-08-01 |  |  |  | 0.33d |  |  |  |  |  |
| 3 | 1.2 | **Setting enviroment** |  | 3.83d | 2011-08-01 A | 2011-09-05 A |  | 100% |  |  |  |  |  | 69h | 69h |
| 4 | 1.2.1 | Asignacion de Recursos |  | 0.33d | 2011-08-01 A | 2011-08-01 A | 2 | 100% |  |  |  |  | Damin; Pablo; Martin | 6h | 6h |
| 5 | 1.2.2 | Capacitación |  | 1.5d | 2011-08-01 A | 2011-09-05 A | 4 | 100% |  |  |  |  | Damin; Pablo; Martin | 27h | 27h |
| 6 | 1.2.3 | Set enviroment |  | 2d | 2011-08-08 A | 2011-08-29 A | 4FS+4h | 100% |  |  |  | start no earlier than 2011-08-07 | Damin; Pablo; Martin | 36h | 36h |
| 7 | 1.3 | Sprint 1 y 2 Planning Meeting |  | 0.17d | 2011-09-05 A | 2011-09-05 | 3 | 50% | 0.08d | 12.17d |  |  | Damin; Pablo; Martin | 3h | 1.5h |
| 8 | 1.4 | **Sprint 1 - Privacy & Security** |  | 1.08d | 2011-09-12 A | 2011-09-19 A | 7 | 100% |  |  |  |  |  | 15.5h | 15.5h |
| 9 | 1.4.1 | **Privacy tasks** |  | 0.33d | 2011-09-12 A | 2011-09-12 A |  | 100% |  |  |  |  |  | 4h | 4h |
| 10 | 1.4.1.1 | Verify terms and conditions approval |  | 0.33d | 2011-09-12 A | 2011-09-12 A |  | 100% |  |  |  |  | Martin; Damin | 4h | 4h |
| 11 | 1.4.2 | **Security Improvements** |  | 1.08d | 2011-09-12 A | 2011-09-19 A |  | 100% |  |  |  |  |  | 11.5h | 11.5h |
| 12 | 1.4.2.1 | Sql injection check |  | 0.42d | 2011-09-12 A | 2011-09-12 A | 9 | 100% |  |  |  |  | Martin; Damin | 5h | 5h |
| 13 | 1.4.2.2 | Captcha check |  | 1.08d | 2011-09-12 A | 2011-09-19 A | 7 | 100% |  |  |  |  | Pablo | 6.5h | 6.5h |
| 14 | 1.5 | End Sprint 1 | milestone | 0d | 2011-09-19 | 2011-09-19 | 11, 9 |  |  | 0d |  |  |  |  |  |
| 15 | 1.6 | **Sprint 2 - Social improvements** |  | 2d | 2011-09-19 A | 2011-10-03 | 14 | 50% | 1d | 3.08d | 0d |  |  | 36h | 18h |
| 16 | 1.6.1 | User popularity ranking |  | 2d | 2011-09-19 A | 2011-10-03 |  | 50% | 1d | 3.08d |  |  | Pablo | 12h | 6h |
| 17 | 1.6.2 | Instant messages |  | 2d | 2011-09-19 A | 2011-10-03 |  | 50% | 1d | 3.08d |  |  | Damin; Martin | 24h | 12h |
| 18 | 1.7 | **Integracion Sprint 1 y 2** |  | 0.83d | 2011-10-03 | 2011-10-03 | 15 |  |  | 3.08d | 0d |  |  | 15h |  |
| 19 | 1.7.1 | Tests Sprint 1 y 2 |  | 0.42d | 2011-10-03 | 2011-10-03 |  |  |  | 3.08d | 0d |  | Martin; Damin; Pablo | 7.5h |  |
| 20 | 1.7.2 | Correcciones Sprint 1 y 2 |  | 0.42d | 2011-10-03 | 2011-10-03 | 19 |  |  | 3.08d |  |  | Martin; Damin; Pablo | 7.5h |  |
| 21 | 1.8 | End Sprint 2 | milestone | 0d | 2011-10-03 | 2011-10-03 | 18 |  |  | 5.08d |  |  |  |  |  |
| 22 | 1.9 | Sprint 3 Planning Meeting |  | 0.17d | 2011-10-03 | 2011-10-17 | 18 |  |  | 3.25d | 0d |  | Martin; Damin; Pablo | 3h |  |
| 23 | 1.10 | **Sprint 3 - Miscellaneous** |  | 1.5d | 2011-10-17 | 2011-10-24 | 22 |  |  | 3.08d | 0d |  |  | 27h |  |
| 24 | 1.10.1 | Password recovery |  | 1.5d | 2011-10-17 | 2011-10-24 |  |  |  | 3.25d |  |  | Damin | 9h |  |
| 25 | 1.10.2 | Recommend to a friend |  | 1.5d | 2011-10-17 | 2011-10-24 |  |  |  | 3.25d |  |  | Pablo; Martin | 18h |  |

| ID | WBS | Task | Type | Duration | Start | Finish | Predecessors | Complete | Remaining | Total slack | Free slack | Constraint | Resources | Work | Actual work |
| --- | --- | --- | --- | --- | --- | --- | --- | --- | --- | --- | --- | --- | --- | --- | --- |
| 26 | 1.11 | **Integracion Sprint 3** |  | 1.17d | 2011-10-24 | 2011-10-31 | 23 |  |  | 3.08d | 0d |  |  | 21h |  |
| 27 | 1.11.1 | Tests Sprint 3 |  | 0.58d | 2011-10-24 | 2011-10-31 |  |  |  | 3.25d | 0d |  | Damin; Pablo; Martin | 10.5h |  |
| 28 | 1.11.2 | Correcciones Sprint 3 |  | 0.58d | 2011-10-31 | 2011-10-31 | 27 |  |  | 3.25d |  |  | Damin; Pablo; Martin | 10.5h |  |
| 29 | 1.12 | Release Meeting |  | 0.33d | 2011-10-31 | 2011-11-07 | 26 |  |  | 3.25d | 0d |  | Damin; Pablo; Martin | 6h |  |
| 30 | 1.13 | Reserva Developers |  | 2d | 2011-11-07 | 2011-11-21 | 29 |  |  | 3.25d | 0d |  | Damin; Pablo; Martin | 36h |  |
| 31 | 1.14 | Entrega Final (fin) | milestone | 0d | 2011-11-21 | 2011-11-21 | 30 |  |  | 3.25d |  | finish no earlier than 2011-11-14 |  |  |  |
| 32 | 1.15 | **Management** |  | 15.83d? | 2011-08-01 A | 2011-12-12 |  | 40% | 9.48d? | 0d |  |  |  | 197.01h | 69.88h |
| 33 | 1.15.1 | Project Management |  | 6.97d | 2011-08-01 A | 2011-10-31 | 2 | 37% | 4.37d | 5.53d |  |  | Scrum Master | 41.82h | 15.6h |
| 34 | 1.15.2 | Reserva Manager 1 |  | 8.67d | 2011-08-01 A | 2011-11-14 | 2 | 11% | 7.71d | 3.17d |  |  | Manager 1 | 52h | 5.72h |
| 35 | 1.15.3 | **Testing** |  | 12.33d? | 2011-09-05 A | 2011-12-12 | 3 | 15% | 10.44d? | 0d |  |  |  | 52h | 8h |
| 36 | 1.15.3.1 | Definición de casos de prueba 1 |  | 1.33d? | 2011-09-05 A | 2011-09-19 A |  | 100% |  |  |  |  | Manager 2 | 8h | 8h |
| 37 | 1.15.3.2 | Testing 1 |  | 1.33d | 2011-09-19 | 2011-10-03 | 36 |  |  | 0d |  |  | Manager 2 | 8h |  |
| 38 | 1.15.3.3 | Definición de casos de prueba 2 |  | 1.5d? | 2011-10-03 | 2011-10-24 | 37 |  |  | 0d |  |  | Manager 2 | 9h |  |
| 39 | 1.15.3.4 | Testing 2 |  | 1.5d | 2011-10-31 | 2011-11-14 | 38 |  |  | 0d |  |  | Manager 2 | 9h |  |
| 40 | 1.15.3.5 | Definición de casos de prueba 3 |  | 1.5d? | 2011-11-14 | 2011-11-28 | 39 |  |  | 0d |  |  | Manager 2 | 9h |  |
| 41 | 1.15.3.6 | Testing 3 |  | 1.5d | 2011-11-28 | 2011-12-12 | 40 |  |  | 0d |  |  | Manager 2 | 9h |  |
| 42 | 1.15.4 | IT Support |  | 8.46d | 2011-08-01 A | 2011-11-14 A | 2 | 100% |  |  |  |  | Manager 3 [65%] | 32.99h | 32.99h |
| 43 | 1.15.5 | Project Status Tracking |  | 8.67d | 2011-08-01 A | 2011-11-14 | 2 | 45% | 4.77d | 3.17d |  |  | Manager 3 [25%] | 13h | 5.85h |
| 44 | 1.15.6 | Team Meeting Planning |  | 8.67d | 2011-08-01 A | 2011-11-14 | 2 | 33% | 5.81d | 3.17d |  |  | Manager 3 [10%] | 5.2h | 1.72h |
